# 开发新产品

Schedule from MS Project, 2017-04-24 to 2017-08-21, A marks actual dates.

## Calendars

- 标准: Mon-Fri 08:00-12:00, 13:00-17:00; Sat-Sun off.

## Resources

| Resource |
| --- |
| 管理人员 |
| 产品工程设计 |
| 法律 |
| 市场 |
| 项目经理 |
| 加工工程师 |
| 生产工程师 |
| 安全 |
| 会计 |
| 用户 |
| 采购 |
| 客户端程序 |
| 制作人 |
| 主策划 |
| 主程序 |
| 老板 |

## Schedule

| ID | WBS | Task | Type | Duration | Start | Finish | Predecessors | Complete | Remaining | Actual start | Total slack | Free slack | Constraint | Resources | Work |
| --- | --- | --- | --- | --- | --- | --- | --- | --- | --- | --- | --- | --- | --- | --- | --- |
| 1 | 1 | **lianwu原型开发** |  | 66d | 2017-04-24 A | 2017-07-24 |  | 16% | 55.18d |  |  |  |  |  | 344h |
| 2 | 1.1 | **原型1：恋舞OL+U3D4.7+旧架构** |  | 25d | 2017-04-24 A | 2017-05-26 |  | 32% | 17d |  |  |  |  |  | 40h |
| 3 | 1.1.1 | ClientFrame: Client代码整合并构建Frame（包括工具） |  | 5d | 2017-04-24 | 2017-04-28 |  |  |  |  | 2d | 0d |  | 主程序 | 40h |
| 4 | 1.1.2 | ServerFrame: Server代码整合并构建Frame（包括数据库） |  | 5d | 2017-05-01 A | 2017-05-05 | 3 | 40% | 3d |  | 15d |  |  |  |  |
| 5 | 1.1.3 | Server/Res部署 |  | 5d | 2017-05-08 A | 2017-05-12 A | 4 | 100% |  |  |  |  |  |  |  |
| 6 | 1.1.4 | 资源和配置准备 |  | 5d | 2017-05-15 A | 2017-05-19 | 5 | 20% | 4d |  | 0d |  |  |  |  |
| 7 | 1.1.5 | Demo制作 |  | 5d | 2017-05-22 | 2017-05-26 | 6 |  |  |  | 0d |  |  |  |  |
| 8 | 1.2 | **阶段2：《舞动》+U3D5+新架构** |  | 20d | 2017-05-29 A | 2017-06-23 |  |  | 20d |  |  |  |  |  | 152h |
| 9 | 1.2.1 | Client：在新基础上构建新框架 |  | 19d | 2017-05-29 A | 2017-06-23 | 7 |  | 19d |  | 41d |  | finish no earlier than 2017-06-23 | 主程序 | 152h |
| 10 | 1.3 | **阶段3：新框架+新团队+新体验** |  | 21d | 2017-06-26 A | 2017-07-24 |  | 12% | 18.53d |  |  |  |  |  | 152h |
| 11 | 1.3.1 | 玩法和体验讨论：团队讨论 |  | 6d | 2017-06-26 A | 2017-07-03 |  |  | 6d |  | 35d |  | finish no earlier than 2017-07-06 | 制作人; 主策划; 主程序 | 144h |
| 12 | 1.3.2 | Demo2：跳舞新体验，社交新体验，美术新体验 |  | 10d | 2017-07-10 A | 2017-07-21 |  | 20% | 8d |  | 0d |  |  |  |  |
| 13 | 1.3.3 | Demo审核：公司审核游戏核心体验 | milestone | 1d | 2017-07-24 | 2017-07-24 | 12 |  |  |  | 0d |  |  | 老板 | 8h |
| 14 | 2 | **lianwu底层框架搭建** |  | 20d | 2017-07-25 | 2017-08-21 | 1 | 40% | 12d | 2017-07-24 |  |  |  |  |  |
| 15 | 2.1 | 框架：完善框架，核心底层搭建 | manual | 20d | 2017-07-24 A | 2017-08-18 |  | 40% | 12d |  |  |  |  |  |  |

Notes:
- 1: 从旧系统到新系统的过渡，从旧体验到新体验的过渡 / Demo包含框架Frame的部分搭建
- 2: 去除冗余资源和代码后，在《恋舞OL》的资源基础上快速出一个Demo / 仍然建立在u3d4.7基础上，相关u3d模块（包括NGUI，动作系统等） / 目的：熟悉老项目整体流程，为后期频繁制作和调整Demo框架夯实基础，在此基础上构建新框架
- 3: 去除：冗余模块和代码 / 调整：模块机制和逻辑调整 / 新增：新增新模块或代码逻辑 / 工具：熟悉工具使用和逻辑
- 4: 了解：Server框架，Sever业务图谱，Server技术图谱 / 去除：冗余模块和代码 / 调整：模块机制和逻辑调整 / 新增：新增新模块或代码逻辑 / 数据库：熟悉并使用 / 配置：Server各种启动配置；游戏配置（功能，lua等）
- 5: 搭建：云服务器，IIS服务器部署，数据库部署 / 资源：在相应服务器上部署资源
- 6: 资源准备：模型（场景，角色），动作，音乐，UI，特效等 / 配置准备：各种C/S功能配置文件（stage，lua，谱面等）
- 7: 搭建：在改进后的框架上搭建Demo/ 功能：一般流程，跳舞，操作等 / 体验：各种细节处理 / 删除：屏蔽冗余功能和流程
- 9: Unity新模块：UI系统（UGUI），动作系统（Animator），资源系统（AB） / 模块框架：UI模块设计，动作模块设计，资源模块设计，舞蹈模块设计
- 12: 美术新体验：新的角色，动作，UI，特效，场景等
- 14: Frame: 在原型开发阶段的Frame基础上，更深刻的构建框架
- 15: 考虑问题：考虑前端框架问题，运营问题，崩溃问题，性能问题，发热问题，网络问题 / 框架：问题驱动，来调整框架
